Schedule from GanttProject, 2025-11-24 to 2026-05-29.

## Calendars

- Project calendar: Mon-Fri working; Sat-Sun off.

## Resources

| Resource | Group |
| --- | --- |
| Alexis |  |
| Michel | Développeur WEB |
| Bastien | Développeur système |
| Jade | Responsable communication |

## Schedule

| ID | WBS | Task | Duration | Start | Finish | Predecessors | Resources |
| --- | --- | --- | --- | --- | --- | --- | --- |
| 1 | 1 | **PHASE 1 - INFRASTRUCTURE** | 116d | 2025-11-24 | 2026-05-04 |  |  |
| 2 | 1.1 | **BANC DE TEST** | 100d | 2025-12-16 | 2026-05-04 |  |  |
| 3 | 1.1.1 | Banc Test - Basique | 15d | 2025-12-16 | 2026-01-05 |  | Jade |
| 4 | 1.1.2 | Banc Test - Renforcée | 15d | 2025-12-16 | 2026-01-05 |  | Alexis |
| 5 | 1.1.3 | Banc Test - Serveurs | 50d | 2025-12-23 | 2026-03-02 |  | Alexis |
| 6 | 1.1.4 | Banc Test - Serveurs Applicatifs | 20d | 2026-04-07 | 2026-05-04 |  | Michel |
| 7 | 1.2 | **BASE DE DONNEES** | 97d | 2025-11-24 | 2026-04-07 |  |  |
| 8 | 1.2.1 | Liste donnée à récupérer | 15d | 2025-11-24 | 2025-12-12 |  | Alexis |
| 9 | 1.2.2 | Diagrammes UML | 30d | 2025-12-15 | 2026-01-23 | 8 | Alexis [40%]; Bastien [60%] |
| 10 | 1.2.3 | Script SQL création BDD | 42d | 2026-01-26 | 2026-03-24 | 9 | Bastien |
| 11 | 1.2.4 | Script initialisation BDD | 10d | 2026-03-25 | 2026-04-07 | 10 | Bastien |
| 12 | 1.2.5 | Script automatisation déploiement BDD | 5d | 2026-03-25 | 2026-03-31 | 10, 11SF+5d | Bastien |
| 13 | 1.3 | **CONTEUNEURS** | 30d | 2026-01-06 | 2026-02-16 |  |  |
| 14 | 1.3.1 | Dockerfile - BDD | 20d | 2026-01-06 | 2026-02-02 |  | Bastien |
| 15 | 1.3.2 | Dockerfile - API | 20d | 2026-01-06 | 2026-02-02 |  | Bastien |
| 16 | 1.3.3 | Dockerfile - WEB | 20d | 2026-01-06 | 2026-02-02 |  | Michel [5%]; Bastien [95%] |
| 17 | 1.3.4 | Dockerfile - Découverte réseau | 20d | 2026-01-06 | 2026-02-02 |  | Alexis [5%]; Bastien [95%] |
| 18 | 1.3.5 | Dockerfile - Cartographie | 20d | 2026-01-06 | 2026-02-02 |  | Alexis [5%]; Bastien [95%] |
| 19 | 1.3.6 | Script d'installation | 10d | 2026-02-03 | 2026-02-16 | 14, 15, 16, 17, 18 | Bastien |
| 20 | 2 | **PHASE 2 - DEVELOPPEMENT** | 74d | 2026-01-19 | 2026-04-30 |  |  |
| 21 | 2.1 | **COLLECTE & TRAITEMENT DONNEES** | 35d | 2026-01-19 | 2026-03-06 |  |  |
| 22 | 2.1.1 | Script récupération infos réseaux | 15d | 2026-01-26 | 2026-02-13 |  | Alexis |
| 23 | 2.1.2 | Script formalisation des données | 15d | 2026-02-16 | 2026-03-06 | 22 | Alexis |
| 24 | 2.1.3 | Script récurrence des collectes | 15d | 2026-02-09 | 2026-02-27 | 22FS-5d | Alexis |
| 25 | 2.1.4 | Script gestion des accès réseau | 10d | 2026-01-19 | 2026-01-30 |  | Alexis |
| 26 | 2.1.5 | Script modification des paramètres | 15d | 2026-02-09 | 2026-02-27 |  | Alexis |

| ID | WBS | Task | Duration | Start | Finish | Predecessors | Resources |
| --- | --- | --- | --- | --- | --- | --- | --- |
| 27 | 2.2 | **MODULE PYTHON** | 35d | 2026-03-02 | 2026-04-17 |  |  |
| 28 | 2.2.1 | Module découverte SNMP Cisco | 5d | 2026-03-02 | 2026-03-06 | 22, 24 | Alexis |
| 29 | 2.2.2 | Module découverte générique | 10d | 2026-03-09 | 2026-03-20 | 22, 23, 24 | Alexis |
| 30 | 2.2.3 | Module génération topologie | 15d | 2026-03-16 | 2026-04-03 | 28, 29FS-5d | Alexis |
| 31 | 2.2.4 | Gestion des erreurs | 10d | 2026-04-06 | 2026-04-17 | 28, 29, 30 | Alexis |
| 32 | 2.3 | **API REST** | 40d | 2026-02-02 | 2026-03-27 |  |  |
| 33 | 2.3.1 | Création API | 15d | 2026-02-02 | 2026-02-20 |  | Bastien |
| 34 | 2.3.2 | Intégration avec BDD | 10d | 2026-03-02 | 2026-03-13 | 30SF, 33FS-5d | Alexis [20%]; Bastien [80%] |
| 35 | 2.3.3 | Ajout authentification | 15d | 2026-02-23 | 2026-03-13 | 33 | Bastien |
| 36 | 2.3.4 | Gestion des erreurs | 10d | 2026-03-16 | 2026-03-27 | 33, 34, 35 | Bastien |
| 37 | 2.4 | **WEB** | 59d | 2026-02-09 | 2026-04-30 |  |  |
| 38 | 2.4.1 | Backend | 15d | 2026-02-09 | 2026-02-27 |  | Michel |
| 39 | 2.4.2 | Récupération informations BDD | 5d | 2026-02-09 | 2026-02-13 | 38SS | Michel |
| 40 | 2.4.3 | Page login | 15d | 2026-02-23 | 2026-03-13 |  | Michel |
| 41 | 2.4.4 | Page accueil | 15d | 2026-02-16 | 2026-03-06 |  |  |
| 42 | 2.4.5 | Page Cartographie | 10d | 2026-04-06 | 2026-04-17 | 30 | Alexis |
| 43 | 2.4.6 | Site vitrine de l'entreprise | 40d | 2026-03-06 | 2026-04-30 |  | Michel [10%]; Jade [90%] |
| 44 | 3 | **PHASE 3 - LICENCE & CONFORMITE** | 70d | 2026-02-09 | 2026-05-15 |  |  |
| 45 | 3.1 | **CONFORMITE** | 55d | 2026-03-02 | 2026-05-15 |  |  |
| 46 | 3.1.1 | Fonction suppression de données | 10d | 2026-03-30 | 2026-04-10 |  | Alexis |
| 47 | 3.1.2 | Hash credentials | 10d | 2026-03-02 | 2026-03-13 |  | Alexis |
| 48 | 3.1.3 | Vérifier logs/alertes aucune informations en claires | 10d | 2026-04-17 | 2026-04-30 |  | Alexis |
| 49 | 3.1.4 | Documentation technique de conformité | 40d | 2026-03-23 | 2026-05-15 |  | Alexis |
| 50 | 3.1.5 | Chiffrement des données | 20d | 2026-03-30 | 2026-04-24 |  | Alexis |

| ID | WBS | Task | Duration | Start | Finish | Predecessors | Resources |
| --- | --- | --- | --- | --- | --- | --- | --- |
| 51 | 3.2 | **GESTION DES LICENCES** | 50d | 2026-02-09 | 2026-04-17 |  |  |
| 52 | 3.2.1 | Module calcul nombre équipements actifs | 10d | 2026-02-09 | 2026-02-20 |  | Alexis |
| 53 | 3.2.2 | Création fichier licence | 15d | 2026-02-09 | 2026-02-27 |  | Michel |
| 54 | 3.2.3 | Vérification automatique des licences | 15d | 2026-03-02 | 2026-03-20 | 53 | Michel |
| 55 | 3.2.4 | Fonctionnalité de check | 20d | 2026-03-02 | 2026-03-27 | 52, 53 | Michel |
| 56 | 3.2.5 | Gestion des erreurs | 10d | 2026-04-06 | 2026-04-17 |  | Michel |
| 57 | 4 | **PHASE 4 - RENDU** | 85d | 2026-02-02 | 2026-05-29 |  |  |
| 58 | 4.1 | **DOCUMENTATION** | 75d | 2026-02-02 | 2026-05-15 |  |  |
| 59 | 4.1.1 | Guide déploiement | 30d | 2026-04-06 | 2026-05-15 |  | Bastien |
| 60 | 4.1.2 | Guide utilisation | 30d | 2026-04-06 | 2026-05-15 |  | Alexis |
| 61 | 4.1.3 | Guide bonne pratique | 20d | 2026-04-20 | 2026-05-15 |  | Alexis |
| 62 | 4.1.4 | Documentation API | 30d | 2026-02-02 | 2026-03-13 | 33SS, 35FF | Bastien |
| 63 | 4.2 | **ESSAIS FINAUX** | 60d | 2026-02-23 | 2026-05-15 |  |  |
| 64 | 4.2.1 | Script test global | 15d | 2026-04-27 | 2026-05-15 |  | Alexis |
| 65 | 4.2.2 | Script test cohérences données | 20d | 2026-02-23 | 2026-03-20 |  | Alexis |
| 66 | 4.2.3 | Script automatisation déploiement | 15d | 2026-03-23 | 2026-04-10 |  | Bastien |
| 67 | 4.3 | **PACKAGE** | 40d | 2026-04-06 | 2026-05-29 |  |  |
| 68 | 4.3.1 | Création paquet .deb | 5d | 2026-04-06 | 2026-04-10 |  | Bastien |
| 69 | 4.3.2 | Script installation locale | 15d | 2026-04-20 | 2026-05-08 |  | Bastien |
| 70 | 4.3.3 | Vidéo présentation de l'outil | 40d | 2026-04-06 | 2026-05-29 |  | Alexis [20%]; Michel [40%]; Bastien [20%]; Jade [20%] |
